# Evaluate Strategic Merger or Acquisition (M&A)

How a schedule from MS Project XML changed from version to version. A marks actual dates.

## Version 1 (saved 2024-11-15)

Note of the change: Add playwright end to end integration tests to project

| ID | WBS | Task | Duration | Start | Finish | Predecessors | Total float |
| --- | --- | --- | --- | --- | --- | --- | --- |
| 1 | 1 | **Develop Mergers & Acquisition Strategy** | 31d | 2024-09-26 | 2024-11-07 |  | 0d |
| 2 | 1.1 | **Identify Current Capabilities and Positioning** | 9d | 2024-09-26 | 2024-10-08 |  | 0d |
| 3 |  | Perform Competitive Analysis | 2d | 2024-09-26 | 2024-09-27 |  | 0d |
| 4 |  | Perform Market Trend Analysis | 3d | 2024-09-30 | 2024-10-02 | 3 | 0d |
| 5 |  | Define Current Positioning and Gaps | 4d | 2024-10-03 | 2024-10-08 | 4 | 0d |
| 6 |  | Current Position Analysis Complete | 0d | 2024-10-08 | 2024-10-08 | 5 | 0d |
| 7 | 1.2 | **Define Merger/Acquisition Goals** | 13d | 2024-10-09 | 2024-10-25 |  | 0d |
| 8 |  | Define Strategic Objectives For M&A | 4d | 2024-10-09 | 2024-10-14 | 6 | 0d |
| 9 | 1.2.2 | **Define Risk Tolerance for M&A** | 9d | 2024-10-15 | 2024-10-25 |  | 14d |
| 10 |  | Define Financial Risk Tolerance | 2d | 2024-10-15 | 2024-10-16 | 8 | 14d |
| 11 |  | Define Market Position Risk Tolerance | 5d | 2024-10-17 | 2024-10-23 | 10 | 14d |
| 12 |  | Define Capabilities Risk Tolerance | 2d | 2024-10-24 | 2024-10-25 | 11 | 14d |
| 13 |  | Complete Risk Tolerance Assessment | 0d | 2024-10-25 | 2024-10-25 | 12 | 14d |
| 14 | 1.3 | **Define Internal Versus M&A Evaluation Criteria** | 9d | 2024-10-28 | 2024-11-07 |  | 14d |
| 15 |  | Define Internal Development Capabilities Model | 1d | 2024-10-28 | 2024-10-28 | 13 | 14d |
| 16 |  | Define Internal Versus M&A Comparison Model | 3d | 2024-10-29 | 2024-10-31 | 15 | 14d |
| 17 |  | Define Selection Scenario and Target Performance Measures | 5d | 2024-11-01 | 2024-11-07 | 16 | 14d |
| 18 |  | Internal Versus M&A Evaluation Criteria Complete | 0d | 2024-11-07 | 2024-11-07 | 17 | 14d |
| 19 | 1.4 | **Form Merger & Acquisition Team** | 11d | 2024-10-15 | 2024-10-29 |  | 0d |
| 20 |  | Identify Merger & Acquisition Team Members | 2d | 2024-10-15 | 2024-10-16 | 8 | 0d |
| 21 |  | Document Merger & Acquisition Team Charter | 1d | 2024-10-17 | 2024-10-17 | 20 | 0d |
| 22 |  | Set Merger & Acquisition Team Major Milestones | 4d | 2024-10-18 | 2024-10-23 | 21 | 0d |
| 23 |  | Set Merger & Acquisition Team Process | 2d | 2024-10-24 | 2024-10-25 | 22 | 0d |
| 24 |  | Hold Merger & Acquisition Team Kickoff Meeting | 2d | 2024-10-28 | 2024-10-29 | 23 | 0d |
| 25 |  | Formation of Merger & Acquisition Team Complete | 0d | 2024-10-29 | 2024-10-29 | 24 | 0d |
| 26 | 2 | **Define M&A Target Identification and Screening Criteria** | 22d | 2024-10-30 | 2024-11-28 |  | 0d |
| 27 | 2.1 | **Define Target Identification Criteria** | 12d | 2024-10-30 | 2024-11-14 |  | 0d |
| 28 |  | Define Industry, Product, and Channel Criteria | 1d | 2024-10-30 | 2024-10-30 | 25 | 0d |
| 29 |  | Define Profitability, Capitalization, and Cash Flow Criteria | 4d | 2024-10-31 | 2024-11-05 | 28 | 0d |
| 30 |  | Define Intellectual Property and R&D Criteria | 1d | 2024-11-06 | 2024-11-06 | 29 | 0d |
| 31 |  | Define Management, Organization, and Governance Criteria | 3d | 2024-11-07 | 2024-11-11 | 30 | 0d |
| 32 |  | Define Risk, Legal, and Financial Exposure Criteria | 2d | 2024-11-12 | 2024-11-13 | 31 | 0d |
| 33 |  | Define and Summarize Synergy Criteria | 1d | 2024-11-14 | 2024-11-14 | 32 | 0d |
| 34 |  | Target Identification Criteria Complete | 0d | 2024-11-14 | 2024-11-14 | 33 | 0d |
| 35 | 2.2 | **Define Quantitative and Qualitative Screening Criteria** | 10d | 2024-11-15 | 2024-11-28 |  | 0d |
| 36 |  | Define Industry, Product, and Channel Screens | 1d | 2024-11-15 | 2024-11-15 | 34 | 0d |
| 37 |  | Define Profitability, Capitalization, and Cash Flow Screens | 2d | 2024-11-18 | 2024-11-19 | 36 | 0d |
| 38 |  | Define Intellectual Property and R&D Screens | 3d | 2024-11-20 | 2024-11-22 | 37 | 0d |
| 39 |  | Define Management, Organization, and Governance Screens | 2d | 2024-11-25 | 2024-11-26 | 38 | 0d |
| 40 |  | Define Risk, Legal, and Financial Exposure Tolerance Screens | 2d | 2024-11-27 | 2024-11-28 | 39 | 0d |
| 41 |  | Screening Criteria Complete | 0d | 2024-11-28 | 2024-11-28 | 40 | 0d |
| 42 | 3 | **Develop List of Potential Acquisitions** | 45d? | 2024-11-08 | 2025-01-09 |  | 0d |
| 43 |  | Select Investment Banker | 1d? | 2024-11-08 | 2024-11-08 | 18 | 14d |
| 44 |  | Develop List of Potential Acquisitions | 6w | 2024-11-29 | 2025-01-09 | 43, 41 | 0d |
| 45 |  | List of Potential Acquisitions Complete | 0d | 2025-01-09 | 2025-01-09 | 44 | 0d |
| 46 | 4 | **Perform M&A Target Valuation Analysis and Due Diligence** | 27d? | 2025-01-10 | 2025-02-17 |  | 0d |
| 47 | 4.1 | **Perform Valuation Analysis** | 10d? | 2025-01-10 | 2025-01-23 |  | 0d |
| 48 | 4.1.1 | **Perform Financial Valuation Analysis** | 10d | 2025-01-10 | 2025-01-23 |  | 0d |
| 49 |  | Define Financial Scenarios | 2d | 2025-01-10 | 2025-01-13 | 45 | 0d |
| 50 |  | Develop Financial Synergy Analysis | 3d | 2025-01-14 | 2025-01-16 | 49 | 0d |
| 51 |  | Define Financial Risks and Opportunities | 5d | 2025-01-17 | 2025-01-23 | 50 | 0d |
| 52 | 4.1.2 | **Perform Market and Product Analysis** | 8d | 2025-01-10 | 2025-01-21 |  | 2d |
| 53 |  | Identify Market Synergies | 3d | 2025-01-10 | 2025-01-14 | 45 | 2d |
| 54 |  | Identify Product Synergies | 4d | 2025-01-15 | 2025-01-20 | 53 | 2d |
| 55 |  | Identify Combined Portfolio Strategies | 1d | 2025-01-21 | 2025-01-21 | 54 | 2d |
| 56 |  | Perform Industry Specific Analysis | 1d? | 2025-01-10 | 2025-01-10 | 45 | 9d |
| 57 |  | Perform Intellectual Property and R&D Analysis (if appropriate) | 3d | 2025-01-10 | 2025-01-14 | 45 | 7d |
| 58 | 4.1.5 | **Perform Legal and Gov't Compliance Analysis** | 8d? | 2025-01-10 | 2025-01-21 |  | 2d |
| 59 |  | Define Legal Risks, Issues, and Synergies | 3d | 2025-01-10 | 2025-01-14 | 45 | 2d |
| 60 |  | Define SEC Compliance Risks, Issues, and Scenarios | 4d | 2025-01-15 | 2025-01-20 | 59 | 2d |
| 61 |  | Define Other Gov't Regulatory Risks, Issues, and Synergies | 1d? | 2025-01-21 | 2025-01-21 | 60 | 2d |
| 62 | 4.1.6 | **Perform Management and Corporate Governance Analysis** | 6d? | 2025-01-10 | 2025-01-17 |  | 4d |
| 63 |  | Define Management Synergies and Scenarios | 1d? | 2025-01-10 | 2025-01-10 | 45 | 4d |
| 64 |  | Define Corporate Governance Synergies and Scenarios | 3d | 2025-01-13 | 2025-01-15 | 63 | 4d |
| 65 |  | Define Institutional Shareholder Synergies, Impacts, and Scenarios | 2d | 2025-01-16 | 2025-01-17 | 64 | 4d |
| 66 | 4.1.7 | **Finalize Due Diligence Checklists** | 5d? | 2025-01-10 | 2025-01-16 |  | 41d |
| 67 |  | Prioritize Due Diligence Activities | 1d | 2025-01-10 | 2025-01-10 | 45 | 41d |
| 68 |  | Assign Due Diligence Activities | 3d | 2025-01-13 | 2025-01-15 | 67 | 41d |
| 69 |  | Define Due Diligence Schedule | 1d? | 2025-01-16 | 2025-01-16 | 68 | 41d |
| 70 |  | Valuation Analysis Complete | 0d | 2025-01-23 | 2025-01-23 | 51, 55, 56, 57, 61, 65 | 0d |

| ID | WBS | Task | Duration | Start | Finish | Predecessors | Total float |
| --- | --- | --- | --- | --- | --- | --- | --- |
| 71 | 4.2 | **Perform Due Diligence Activities** | 17d? | 2025-01-24 | 2025-02-17 |  | 0d |
| 72 |  | Perform Fiscal Cost/Benefit Due Diligence | 2d | 2025-01-24 | 2025-01-27 | 70 | 0d |
| 73 |  | Perform Financial Reporting Requirements Due Diligence | 1d | 2025-01-28 | 2025-01-28 | 72 | 0d |
| 74 |  | Perform Market and Product Due Diligence | 1d? | 2025-01-29 | 2025-01-29 | 73 | 0d |
| 75 |  | Perform Industry-Specific Due Diligence | 6d | 2025-01-30 | 2025-02-06 | 74 | 0d |
| 76 |  | Perform Intellectual Property and R&D Due Diligence | 1d | 2025-02-07 | 2025-02-07 | 75 | 0d |
| 77 |  | Perform Legal, Risk, and Government Compliance Due Diligence | 2d | 2025-02-10 | 2025-02-11 | 76 | 0d |
| 78 |  | Perform Management and Corporate Governance Due Diligence | 1d | 2025-02-12 | 2025-02-12 | 77 | 0d |
| 79 |  | Compile Results of Due Diligence Assessment | 3d | 2025-02-13 | 2025-02-17 | 78 | 0d |
| 80 |  | Due Diligence Assessment Complete | 0d | 2025-02-17 | 2025-02-17 | 79 | 0d |
| 81 |  | Valuation and Due Diligence Complete | 0d | 2025-02-17 | 2025-02-17 | 70, 80 | 0d |
| 82 | 5 | **Perform Selection** | 5d | 2025-02-18 | 2025-02-24 |  | 0d |
| 83 |  | Present Selection Results | 3d | 2025-02-18 | 2025-02-20 | 81 | 0d |
| 84 |  | Confirm Initial Selection | 2d | 2025-02-21 | 2025-02-24 | 83 | 0d |
| 85 |  | Initial Selection Complete | 0d | 2025-02-24 | 2025-02-24 | 84 | 0d |
| 86 | 6 | **Perform Investment Activities** | 14d | 2025-02-25 | 2025-03-14 |  | 0d |
| 87 |  | Develop Merger/Acquisition Financing Strategies | 4d | 2025-02-25 | 2025-02-28 | 85 | 0d |
| 88 |  | Develop SEC Documents | 2d | 2025-03-03 | 2025-03-04 | 87 | 0d |
| 89 |  | Secure Financing | 2d | 2025-03-05 | 2025-03-06 | 88 | 0d |
| 90 |  | Prepare and Hold Proxy Vote | 4d | 2025-03-07 | 2025-03-12 | 89 | 0d |
| 91 |  | Finalize Investment Activities | 2d | 2025-03-13 | 2025-03-14 | 90 | 0d |
| 92 |  | Complete Transaction | 0d | 2025-03-14 | 2025-03-14 | 91 | 0d |
| 93 |  | Merger & Acquisition Transaction Complete | 0d | 2025-03-14 | 2025-03-14 | 92 | 0d |

## Version 2 (saved 2025-02-26)

Note of the change: some api rework for security

Last finish 2025-03-14 → 2025-06-17 (+95d).

Changed:

| ID | Task | Start | Finish | Other |
| --- | --- | --- | --- | --- |
| 1 | **Develop Mergers & Acquisition Strategy** | 2024-09-26 → 2024-12-30 (+95d) | 2024-11-07 → 2025-02-10 (+95d) |  |
| 2 | **Identify Current Capabilities and Positioning** | 2024-09-26 → 2024-12-30 (+95d) | 2024-10-08 → 2025-01-09 (+93d) |  |
| 3 | Perform Competitive Analysis | 2024-09-26 → 2024-12-30 (+95d) | 2024-09-27 → 2024-12-31 (+95d) | constraint none → start no earlier than 2024-12-30 |
| 4 | Perform Market Trend Analysis | 2024-09-30 → 2025-01-01 (+93d) | 2024-10-02 → 2025-01-03 (+93d) |  |
| 5 | Define Current Positioning and Gaps | 2024-10-03 → 2025-01-06 (+95d) | 2024-10-08 → 2025-01-09 (+93d) |  |
| 6 | Current Position Analysis Complete | 2024-10-08 → 2025-01-09 (+93d) | 2024-10-08 → 2025-01-09 (+93d) |  |
| 7 | **Define Merger/Acquisition Goals** | 2024-10-09 → 2025-01-10 (+93d) | 2024-10-25 → 2025-01-28 (+95d) |  |
| 8 | Define Strategic Objectives For M&A | 2024-10-09 → 2025-01-10 (+93d) | 2024-10-14 → 2025-01-15 (+93d) |  |
| 9 | **Define Risk Tolerance for M&A** | 2024-10-15 → 2025-01-16 (+93d) | 2024-10-25 → 2025-01-28 (+95d) |  |
| 10 | Define Financial Risk Tolerance | 2024-10-15 → 2025-01-16 (+93d) | 2024-10-16 → 2025-01-17 (+93d) |  |
| 11 | Define Market Position Risk Tolerance | 2024-10-17 → 2025-01-20 (+95d) | 2024-10-23 → 2025-01-24 (+93d) |  |
| 12 | Define Capabilities Risk Tolerance | 2024-10-24 → 2025-01-27 (+95d) | 2024-10-25 → 2025-01-28 (+95d) |  |
| 13 | Complete Risk Tolerance Assessment | 2024-10-25 → 2025-01-28 (+95d) | 2024-10-25 → 2025-01-28 (+95d) |  |
| 14 | **Define Internal Versus M&A Evaluation Criteria** | 2024-10-28 → 2025-01-29 (+93d) | 2024-11-07 → 2025-02-10 (+95d) |  |
| 15 | Define Internal Development Capabilities Model | 2024-10-28 → 2025-01-29 (+93d) | 2024-10-28 → 2025-01-29 (+93d) |  |
| 16 | Define Internal Versus M&A Comparison Model | 2024-10-29 → 2025-01-30 (+93d) | 2024-10-31 → 2025-02-03 (+95d) |  |
| 17 | Define Selection Scenario and Target Performance Measures | 2024-11-01 → 2025-02-04 (+95d) | 2024-11-07 → 2025-02-10 (+95d) |  |
| 18 | Internal Versus M&A Evaluation Criteria Complete | 2024-11-07 → 2025-02-10 (+95d) | 2024-11-07 → 2025-02-10 (+95d) |  |
| 19 | **Form Merger & Acquisition Team** | 2024-10-15 → 2025-01-16 (+93d) | 2024-10-29 → 2025-01-30 (+93d) |  |
| 20 | Identify Merger & Acquisition Team Members | 2024-10-15 → 2025-01-16 (+93d) | 2024-10-16 → 2025-01-17 (+93d) |  |
| 21 | Document Merger & Acquisition Team Charter | 2024-10-17 → 2025-01-20 (+95d) | 2024-10-17 → 2025-01-20 (+95d) |  |
| 22 | Set Merger & Acquisition Team Major Milestones | 2024-10-18 → 2025-01-21 (+95d) | 2024-10-23 → 2025-01-24 (+93d) |  |
| 23 | Set Merger & Acquisition Team Process | 2024-10-24 → 2025-01-27 (+95d) | 2024-10-25 → 2025-01-28 (+95d) |  |
| 24 | Hold Merger & Acquisition Team Kickoff Meeting | 2024-10-28 → 2025-01-29 (+93d) | 2024-10-29 → 2025-01-30 (+93d) |  |
| 25 | Formation of Merger & Acquisition Team Complete | 2024-10-29 → 2025-01-30 (+93d) | 2024-10-29 → 2025-01-30 (+93d) |  |
| 26 | **Define M&A Target Identification and Screening Criteria** | 2024-10-30 → 2025-01-31 (+93d) | 2024-11-28 → 2025-03-03 (+95d) |  |
| 27 | **Define Target Identification Criteria** | 2024-10-30 → 2025-01-31 (+93d) | 2024-11-14 → 2025-02-17 (+95d) |  |
| 28 | Define Industry, Product, and Channel Criteria | 2024-10-30 → 2025-01-31 (+93d) | 2024-10-30 → 2025-01-31 (+93d) |  |
| 29 | Define Profitability, Capitalization, and Cash Flow Criteria | 2024-10-31 → 2025-02-03 (+95d) | 2024-11-05 → 2025-02-06 (+93d) |  |
| 30 | Define Intellectual Property and R&D Criteria | 2024-11-06 → 2025-02-07 (+93d) | 2024-11-06 → 2025-02-07 (+93d) |  |
| 31 | Define Management, Organization, and Governance Criteria | 2024-11-07 → 2025-02-10 (+95d) | 2024-11-11 → 2025-02-12 (+93d) |  |
| 32 | Define Risk, Legal, and Financial Exposure Criteria | 2024-11-12 → 2025-02-13 (+93d) | 2024-11-13 → 2025-02-14 (+93d) |  |
| 33 | Define and Summarize Synergy Criteria | 2024-11-14 → 2025-02-17 (+95d) | 2024-11-14 → 2025-02-17 (+95d) |  |
| 34 | Target Identification Criteria Complete | 2024-11-14 → 2025-02-17 (+95d) | 2024-11-14 → 2025-02-17 (+95d) |  |
| 35 | **Define Quantitative and Qualitative Screening Criteria** | 2024-11-15 → 2025-02-18 (+95d) | 2024-11-28 → 2025-03-03 (+95d) |  |
| 36 | Define Industry, Product, and Channel Screens | 2024-11-15 → 2025-02-18 (+95d) | 2024-11-15 → 2025-02-18 (+95d) |  |
| 37 | Define Profitability, Capitalization, and Cash Flow Screens | 2024-11-18 → 2025-02-19 (+93d) | 2024-11-19 → 2025-02-20 (+93d) |  |
| 38 | Define Intellectual Property and R&D Screens | 2024-11-20 → 2025-02-21 (+93d) | 2024-11-22 → 2025-02-25 (+95d) |  |
| 39 | Define Management, Organization, and Governance Screens | 2024-11-25 → 2025-02-26 (+93d) | 2024-11-26 → 2025-02-27 (+93d) |  |
| 40 | Define Risk, Legal, and Financial Exposure Tolerance Screens | 2024-11-27 → 2025-02-28 (+93d) | 2024-11-28 → 2025-03-03 (+95d) |  |
| 41 | Screening Criteria Complete | 2024-11-28 → 2025-03-03 (+95d) | 2024-11-28 → 2025-03-03 (+95d) |  |
| 42 | **Develop List of Potential Acquisitions** | 2024-11-08 → 2025-02-11 (+95d) | 2025-01-09 → 2025-04-14 (+95d) |  |
| 43 | Select Investment Banker | 2024-11-08 → 2025-02-11 (+95d) | 2024-11-08 → 2025-02-11 (+95d) |  |
| 44 | Develop List of Potential Acquisitions | 2024-11-29 → 2025-03-04 (+95d) | 2025-01-09 → 2025-04-14 (+95d) |  |
| 45 | List of Potential Acquisitions Complete | 2025-01-09 → 2025-04-14 (+95d) | 2025-01-09 → 2025-04-14 (+95d) |  |
| 46 | **Perform M&A Target Valuation Analysis and Due Diligence** | 2025-01-10 → 2025-04-15 (+95d) | 2025-02-17 → 2025-05-21 (+93d) |  |
| 47 | **Perform Valuation Analysis** | 2025-01-10 → 2025-04-15 (+95d) | 2025-01-23 → 2025-04-28 (+95d) |  |
| 48 | **Perform Financial Valuation Analysis** | 2025-01-10 → 2025-04-15 (+95d) | 2025-01-23 → 2025-04-28 (+95d) |  |
| 49 | Define Financial Scenarios | 2025-01-10 → 2025-04-15 (+95d) | 2025-01-13 → 2025-04-16 (+93d) |  |
| 50 | Develop Financial Synergy Analysis | 2025-01-14 → 2025-04-17 (+93d) | 2025-01-16 → 2025-04-21 (+95d) |  |
| 51 | Define Financial Risks and Opportunities | 2025-01-17 → 2025-04-22 (+95d) | 2025-01-23 → 2025-04-28 (+95d) |  |
| 52 | **Perform Market and Product Analysis** | 2025-01-10 → 2025-04-15 (+95d) | 2025-01-21 → 2025-04-24 (+93d) |  |
| 53 | Identify Market Synergies | 2025-01-10 → 2025-04-15 (+95d) | 2025-01-14 → 2025-04-17 (+93d) |  |
| 54 | Identify Product Synergies | 2025-01-15 → 2025-04-18 (+93d) | 2025-01-20 → 2025-04-23 (+93d) |  |
| 55 | Identify Combined Portfolio Strategies | 2025-01-21 → 2025-04-24 (+93d) | 2025-01-21 → 2025-04-24 (+93d) |  |
| 56 | Perform Industry Specific Analysis | 2025-01-10 → 2025-04-15 (+95d) | 2025-01-10 → 2025-04-15 (+95d) |  |
| 57 | Perform Intellectual Property and R&D Analysis (if appropriate) | 2025-01-10 → 2025-04-15 (+95d) | 2025-01-14 → 2025-04-17 (+93d) |  |
| 58 | **Perform Legal and Gov't Compliance Analysis** | 2025-01-10 → 2025-04-15 (+95d) | 2025-01-21 → 2025-04-24 (+93d) |  |
| 59 | Define Legal Risks, Issues, and Synergies | 2025-01-10 → 2025-04-15 (+95d) | 2025-01-14 → 2025-04-17 (+93d) |  |
| 60 | Define SEC Compliance Risks, Issues, and Scenarios | 2025-01-15 → 2025-04-18 (+93d) | 2025-01-20 → 2025-04-23 (+93d) |  |
| 61 | Define Other Gov't Regulatory Risks, Issues, and Synergies | 2025-01-21 → 2025-04-24 (+93d) | 2025-01-21 → 2025-04-24 (+93d) |  |
| 62 | **Perform Management and Corporate Governance Analysis** | 2025-01-10 → 2025-04-15 (+95d) | 2025-01-17 → 2025-04-22 (+95d) |  |
| 63 | Define Management Synergies and Scenarios | 2025-01-10 → 2025-04-15 (+95d) | 2025-01-10 → 2025-04-15 (+95d) |  |
| 64 | Define Corporate Governance Synergies and Scenarios | 2025-01-13 → 2025-04-16 (+93d) | 2025-01-15 → 2025-04-18 (+93d) |  |
| 65 | Define Institutional Shareholder Synergies, Impacts, and Scenarios | 2025-01-16 → 2025-04-21 (+95d) | 2025-01-17 → 2025-04-22 (+95d) |  |
| 66 | **Finalize Due Diligence Checklists** | 2025-01-10 → 2025-04-15 (+95d) | 2025-01-16 → 2025-04-21 (+95d) |  |
| 67 | Prioritize Due Diligence Activities | 2025-01-10 → 2025-04-15 (+95d) | 2025-01-10 → 2025-04-15 (+95d) |  |
| 68 | Assign Due Diligence Activities | 2025-01-13 → 2025-04-16 (+93d) | 2025-01-15 → 2025-04-18 (+93d) |  |
| 69 | Define Due Diligence Schedule | 2025-01-16 → 2025-04-21 (+95d) | 2025-01-16 → 2025-04-21 (+95d) |  |
| 70 | Valuation Analysis Complete | 2025-01-23 → 2025-04-28 (+95d) | 2025-01-23 → 2025-04-28 (+95d) |  |

| ID | Task | Start | Finish |
| --- | --- | --- | --- |
| 71 | **Perform Due Diligence Activities** | 2025-01-24 → 2025-04-29 (+95d) | 2025-02-17 → 2025-05-21 (+93d) |
| 72 | Perform Fiscal Cost/Benefit Due Diligence | 2025-01-24 → 2025-04-29 (+95d) | 2025-01-27 → 2025-04-30 (+93d) |
| 73 | Perform Financial Reporting Requirements Due Diligence | 2025-01-28 → 2025-05-01 (+93d) | 2025-01-28 → 2025-05-01 (+93d) |
| 74 | Perform Market and Product Due Diligence | 2025-01-29 → 2025-05-02 (+93d) | 2025-01-29 → 2025-05-02 (+93d) |
| 75 | Perform Industry-Specific Due Diligence | 2025-01-30 → 2025-05-05 (+95d) | 2025-02-06 → 2025-05-12 (+95d) |
| 76 | Perform Intellectual Property and R&D Due Diligence | 2025-02-07 → 2025-05-13 (+95d) | 2025-02-07 → 2025-05-13 (+95d) |
| 77 | Perform Legal, Risk, and Government Compliance Due Diligence | 2025-02-10 → 2025-05-14 (+93d) | 2025-02-11 → 2025-05-15 (+93d) |
| 78 | Perform Management and Corporate Governance Due Diligence | 2025-02-12 → 2025-05-16 (+93d) | 2025-02-12 → 2025-05-16 (+93d) |
| 79 | Compile Results of Due Diligence Assessment | 2025-02-13 → 2025-05-19 (+95d) | 2025-02-17 → 2025-05-21 (+93d) |
| 80 | Due Diligence Assessment Complete | 2025-02-17 → 2025-05-21 (+93d) | 2025-02-17 → 2025-05-21 (+93d) |
| 81 | Valuation and Due Diligence Complete | 2025-02-17 → 2025-05-21 (+93d) | 2025-02-17 → 2025-05-21 (+93d) |
| 82 | **Perform Selection** | 2025-02-18 → 2025-05-22 (+93d) | 2025-02-24 → 2025-05-28 (+93d) |
| 83 | Present Selection Results | 2025-02-18 → 2025-05-22 (+93d) | 2025-02-20 → 2025-05-26 (+95d) |
| 84 | Confirm Initial Selection | 2025-02-21 → 2025-05-27 (+95d) | 2025-02-24 → 2025-05-28 (+93d) |
| 85 | Initial Selection Complete | 2025-02-24 → 2025-05-28 (+93d) | 2025-02-24 → 2025-05-28 (+93d) |
| 86 | **Perform Investment Activities** | 2025-02-25 → 2025-05-29 (+93d) | 2025-03-14 → 2025-06-17 (+95d) |
| 87 | Develop Merger/Acquisition Financing Strategies | 2025-02-25 → 2025-05-29 (+93d) | 2025-02-28 → 2025-06-03 (+95d) |
| 88 | Develop SEC Documents | 2025-03-03 → 2025-06-04 (+93d) | 2025-03-04 → 2025-06-05 (+93d) |
| 89 | Secure Financing | 2025-03-05 → 2025-06-06 (+93d) | 2025-03-06 → 2025-06-09 (+95d) |
| 90 | Prepare and Hold Proxy Vote | 2025-03-07 → 2025-06-10 (+95d) | 2025-03-12 → 2025-06-13 (+93d) |
| 91 | Finalize Investment Activities | 2025-03-13 → 2025-06-16 (+95d) | 2025-03-14 → 2025-06-17 (+95d) |
| 92 | Complete Transaction | 2025-03-14 → 2025-06-17 (+95d) | 2025-03-14 → 2025-06-17 (+95d) |
| 93 | Merger & Acquisition Transaction Complete | 2025-03-14 → 2025-06-17 (+95d) | 2025-03-14 → 2025-06-17 (+95d) |
