# InstallProjectServer2013

How a schedule from MS Project XML changed from version to version. A marks actual dates.

## Version 1 (saved 2024-11-15)

Note of the change: Add playwright end to end integration tests to project

| ID | WBS | Task | Duration | Start | Finish | Predecessors | Total float |
| --- | --- | --- | --- | --- | --- | --- | --- |
| 1 | 1 | **Plan for Project Server 2013 deployment** | 86d | 2024-09-30 | 2025-01-28 |  | 0d |
| 2 | 1.1 | **Prepare for deployment** | 3d | 2024-09-30 | 2024-10-02 |  | 0d |
| 3 |  | Create users and groups in the Active Directory service | 3d | 2024-09-30 | 2024-10-02 |  | 0d |
| 4 |  | Prepare for development MILESTONE | 0d | 2024-09-30 | 2024-09-30 |  |  |
| 5 | 1.2 | **Configure SQL Server and Analysis Services** | 9d | 2024-10-03 | 2024-10-16 |  | 0d |
| 6 |  | Configure SQL Server network settings | 2d | 2024-10-03 | 2024-10-04 | 3 | 0d |
| 7 |  | Configure Analysis Services for building Project Server OLAP cubes | 4d | 2024-10-07 | 2024-10-10 | 6 | 0d |
| 8 |  | Create additional TempDB files | 3d | 2024-10-11 | 2024-10-15 | 7 | 0d |
| 9 |  | Configure SQL Server and Analysis Services MILESTONE | 0d | 2024-10-16 | 2024-10-16 | 8 |  |
| 10 | 1.3 | **Install SharePoint Server 2013** | 12d | 2024-10-16 | 2024-11-01 |  | 0d |
| 11 |  | Prepare the farm servers | 2d | 2024-10-16 | 2024-10-17 | 8 | 0d |
| 12 |  | Install SharePoint 2013 on the farm servers | 3d | 2024-10-18 | 2024-10-22 | 11 | 0d |
| 13 |  | Create and configure the farm | 2d | 2024-10-23 | 2024-10-24 | 12 | 0d |
| 14 |  | Add web servers to the farm | 2d | 2024-10-25 | 2024-10-28 | 13 | 0d |
| 15 |  | Perform administrative tasks | 3d | 2024-10-29 | 2024-10-31 | 14 | 0d |
| 16 |  | Install SharePoint Server 2013 MILESTONE | 0d | 2024-11-01 | 2024-11-01 | 15 |  |
| 17 | 1.4 | **Install and configure Project Server 2013** | 13d | 2024-11-01 | 2024-11-19 |  | 0d |
| 18 |  | Install Project Server 2013 | 2d | 2024-11-01 | 2024-11-04 | 15 | 0d |
| 19 |  | Run the SharePoint Products and Technologies Configuration Wizard | 4d | 2024-11-05 | 2024-11-08 | 18 | 0d |
| 20 |  | Install and configure Project Server 2013 MILESTONE | 0d | 2024-11-11 | 2024-11-11 | 19 |  |
| 21 | 1.4.4 | **Configure services** | 7d | 2024-11-11 | 2024-11-19 |  | 0d |
| 22 |  | Start the Project Server Application Service | 2d | 2024-11-11 | 2024-11-12 | 19 | 0d |
| 23 |  | Register a managed account | 3d | 2024-11-13 | 2024-11-15 | 22 | 0d |
| 24 |  | Create a Project Server service application | 2d | 2024-11-18 | 2024-11-19 | 23 | 0d |
| 25 |  | Configure services MILESTONE | 0d | 2024-11-11 | 2024-11-11 |  |  |
| 26 | 1.5 | **Create a Project Web App site** | 33d | 2024-11-20 | 2025-01-06 |  | 0d |
| 27 | 1.5.1 | **Deploy Project Web App with a new site collection** | 5d | 2024-11-20 | 2024-11-26 |  | 0d |
| 28 |  | Create a top-level Web site | 2d | 2024-11-20 | 2024-11-21 | 24 | 0d |
| 29 |  | Create a Project Web App site | 3d | 2024-11-22 | 2024-11-26 | 28 | 0d |
| 30 | 1.5.2 | **Deploy Project Web App in an existing site collection** | 28d | 2024-11-27 | 2025-01-06 |  | 0d |
| 31 | 1.5.2.1 | **Enable the Project Web App site collection features** | 20d | 2024-11-27 | 2024-12-24 |  | 0d |
| 32 |  | Create a Project Web App database | 8d | 2024-11-27 | 2024-12-06 | 29 | 0d |
| 33 |  | Enable the Project Web App site collection features | 12d | 2024-12-09 | 2024-12-24 | 32 | 0d |
| 34 |  | Create a Project Web App site in an existing site collection | 8d | 2024-12-25 | 2025-01-03 | 33 | 0d |
| 35 |  | Deploy Project Web App in an existing site collection MILESTONE | 0d | 2025-01-06 | 2025-01-06 | 34 |  |
| 36 | 1.6 | **Configure reporting for Project Web App** | 16d | 2025-01-06 | 2025-01-28 |  | 0d |
| 37 |  | Configure prerequisites | 2d | 2025-01-06 | 2025-01-07 | 34 | 0d |
| 38 |  | Accounts and security groups | 2d | 2025-01-08 | 2025-01-09 | 37 | 0d |
| 39 |  | Add a login for the report authors group | 2d | 2025-01-10 | 2025-01-13 | 38 | 0d |
| 40 |  | Install SQL Server 2008 Analysis Management Objects | 3d | 2025-01-14 | 2025-01-16 | 39 | 0d |
| 41 |  | Configure Excel Services settings | 3d | 2025-01-17 | 2025-01-21 | 40 | 0d |
| 42 |  | Configure Secure Store Service settings | 2d | 2025-01-22 | 2025-01-23 | 41 | 0d |
| 43 |  | Populate the Report Authors and Report Viewers Active Directory groups | 2d | 2025-01-24 | 2025-01-27 | 42 | 0d |
| 44 |  | Configure reporting for Project Web App MILESTONE | 0d | 2025-01-28 | 2025-01-28 | 43 |  |

## Version 2 (saved 2025-02-26)

Note of the change: some api rework for security

Last finish 2025-01-28 → 2025-05-26 (+118d).

Changed:

| ID | Task | Start | Finish | Total float | Predecessors | Other |
| --- | --- | --- | --- | --- | --- | --- |
| 1 | **Plan for Project Server 2013 deployment** | 2024-09-30 → 2025-01-27 (+119d) | 2025-01-28 → 2025-05-26 (+118d) |  |  |  |
| 2 | **Prepare for deployment** | 2024-09-30 → 2025-01-27 (+119d) | 2024-10-02 → 2025-01-29 (+119d) |  |  |  |
| 3 | Create users and groups in the Active Directory service | 2024-09-30 → 2025-01-27 (+119d) | 2024-10-02 → 2025-01-29 (+119d) |  |  | constraint none → start no earlier than 2025-01-27 |
| 4 | Prepare for development MILESTONE | 2024-09-30 → 2025-01-29 (+121d) | 2024-09-30 → 2025-01-29 (+121d) | none → 83d | none → 3 |  |
| 5 | **Configure SQL Server and Analysis Services** | 2024-10-03 → 2025-01-30 (+119d) | 2024-10-16 → 2025-02-11 (+118d) |  |  |  |
| 6 | Configure SQL Server network settings | 2024-10-03 → 2025-01-30 (+119d) | 2024-10-04 → 2025-01-31 (+119d) |  |  |  |
| 7 | Configure Analysis Services for building Project Server OLAP cubes | 2024-10-07 → 2025-02-03 (+119d) | 2024-10-10 → 2025-02-06 (+119d) |  |  |  |
| 8 | Create additional TempDB files | 2024-10-11 → 2025-02-07 (+119d) | 2024-10-15 → 2025-02-11 (+119d) |  |  |  |
| 9 | Configure SQL Server and Analysis Services MILESTONE | 2024-10-16 → 2025-02-11 (+118d) | 2024-10-16 → 2025-02-11 (+118d) | none → 74d |  |  |
| 10 | **Install SharePoint Server 2013** | 2024-10-16 → 2025-02-12 (+119d) | 2024-11-01 → 2025-02-27 (+118d) |  |  |  |
| 11 | Prepare the farm servers | 2024-10-16 → 2025-02-12 (+119d) | 2024-10-17 → 2025-02-13 (+119d) |  |  |  |
| 12 | Install SharePoint 2013 on the farm servers | 2024-10-18 → 2025-02-14 (+119d) | 2024-10-22 → 2025-02-18 (+119d) |  |  |  |
| 13 | Create and configure the farm | 2024-10-23 → 2025-02-19 (+119d) | 2024-10-24 → 2025-02-20 (+119d) |  |  |  |
| 14 | Add web servers to the farm | 2024-10-25 → 2025-02-21 (+119d) | 2024-10-28 → 2025-02-24 (+119d) |  |  |  |
| 15 | Perform administrative tasks | 2024-10-29 → 2025-02-25 (+119d) | 2024-10-31 → 2025-02-27 (+119d) |  |  |  |
| 16 | Install SharePoint Server 2013 MILESTONE | 2024-11-01 → 2025-02-27 (+118d) | 2024-11-01 → 2025-02-27 (+118d) | none → 62d |  |  |
| 17 | **Install and configure Project Server 2013** | 2024-11-01 → 2025-02-28 (+119d) | 2024-11-19 → 2025-03-18 (+119d) |  |  |  |
| 18 | Install Project Server 2013 | 2024-11-01 → 2025-02-28 (+119d) | 2024-11-04 → 2025-03-03 (+119d) |  |  |  |
| 19 | Run the SharePoint Products and Technologies Configuration Wizard | 2024-11-05 → 2025-03-04 (+119d) | 2024-11-08 → 2025-03-07 (+119d) |  |  |  |
| 20 | Install and configure Project Server 2013 MILESTONE | 2024-11-11 → 2025-03-07 (+116d) | 2024-11-11 → 2025-03-07 (+116d) | none → 56d |  |  |
| 21 | **Configure services** | 2024-11-11 → 2025-03-10 (+119d) | 2024-11-19 → 2025-03-18 (+119d) |  |  |  |
| 22 | Start the Project Server Application Service | 2024-11-11 → 2025-03-10 (+119d) | 2024-11-12 → 2025-03-11 (+119d) |  |  |  |
| 23 | Register a managed account | 2024-11-13 → 2025-03-12 (+119d) | 2024-11-15 → 2025-03-14 (+119d) |  |  |  |
| 24 | Create a Project Server service application | 2024-11-18 → 2025-03-17 (+119d) | 2024-11-19 → 2025-03-18 (+119d) |  |  |  |
| 25 | Configure services MILESTONE | 2024-11-11 → 2025-03-18 (+127d) | 2024-11-11 → 2025-03-18 (+127d) | none → 49d | none → 24 |  |
| 26 | **Create a Project Web App site** | 2024-11-20 → 2025-03-19 (+119d) | 2025-01-06 → 2025-05-02 (+116d) |  |  |  |
| 27 | **Deploy Project Web App with a new site collection** | 2024-11-20 → 2025-03-19 (+119d) | 2024-11-26 → 2025-03-25 (+119d) |  |  |  |
| 28 | Create a top-level Web site | 2024-11-20 → 2025-03-19 (+119d) | 2024-11-21 → 2025-03-20 (+119d) |  |  |  |
| 29 | Create a Project Web App site | 2024-11-22 → 2025-03-21 (+119d) | 2024-11-26 → 2025-03-25 (+119d) |  |  |  |
| 30 | **Deploy Project Web App in an existing site collection** | 2024-11-27 → 2025-03-26 (+119d) | 2025-01-06 → 2025-05-02 (+116d) |  |  |  |
| 31 | **Enable the Project Web App site collection features** | 2024-11-27 → 2025-03-26 (+119d) | 2024-12-24 → 2025-04-22 (+119d) |  |  |  |
| 32 | Create a Project Web App database | 2024-11-27 → 2025-03-26 (+119d) | 2024-12-06 → 2025-04-04 (+119d) |  |  |  |
| 33 | Enable the Project Web App site collection features | 2024-12-09 → 2025-04-07 (+119d) | 2024-12-24 → 2025-04-22 (+119d) |  |  |  |
| 34 | Create a Project Web App site in an existing site collection | 2024-12-25 → 2025-04-23 (+119d) | 2025-01-03 → 2025-05-02 (+119d) |  |  |  |
| 35 | Deploy Project Web App in an existing site collection MILESTONE | 2025-01-06 → 2025-05-02 (+116d) | 2025-01-06 → 2025-05-02 (+116d) | none → 16d |  |  |
| 36 | **Configure reporting for Project Web App** | 2025-01-06 → 2025-05-05 (+119d) | 2025-01-28 → 2025-05-26 (+118d) |  |  |  |
| 37 | Configure prerequisites | 2025-01-06 → 2025-05-05 (+119d) | 2025-01-07 → 2025-05-06 (+119d) |  |  |  |
| 38 | Accounts and security groups | 2025-01-08 → 2025-05-07 (+119d) | 2025-01-09 → 2025-05-08 (+119d) |  |  |  |
| 39 | Add a login for the report authors group | 2025-01-10 → 2025-05-09 (+119d) | 2025-01-13 → 2025-05-12 (+119d) |  |  |  |
| 40 | Install SQL Server 2008 Analysis Management Objects | 2025-01-14 → 2025-05-13 (+119d) | 2025-01-16 → 2025-05-15 (+119d) |  |  |  |
| 41 | Configure Excel Services settings | 2025-01-17 → 2025-05-16 (+119d) | 2025-01-21 → 2025-05-20 (+119d) |  |  |  |
| 42 | Configure Secure Store Service settings | 2025-01-22 → 2025-05-21 (+119d) | 2025-01-23 → 2025-05-22 (+119d) |  |  |  |
| 43 | Populate the Report Authors and Report Viewers Active Directory groups | 2025-01-24 → 2025-05-23 (+119d) | 2025-01-27 → 2025-05-26 (+119d) |  |  |  |
| 44 | Configure reporting for Project Web App MILESTONE | 2025-01-28 → 2025-05-26 (+118d) | 2025-01-28 → 2025-05-26 (+118d) | none → 0d |  |  |
